# WBSchart2

Schedule from MS Project, 2010-03-11 to 2010-03-11.

## Calendars

- Standard: Mon-Fri 08:00-12:00, 13:00-17:00; Sat-Sun off.

## Schedule

| ID | WBS | Task | Duration | Start | Finish | Total slack |
| --- | --- | --- | --- | --- | --- | --- |
| 1 | 1 | **Proyecto FacPOS** | 1d? | 2010-03-11 | 2010-03-11 | 0d |
| 2 | 1.1 | **1.0 Gestion del Proyecto** | 1d? | 2010-03-11 | 2010-03-11 | 0d |
| 3 | 1.1.1 | **1.1 Iniciacion** | 1d? | 2010-03-11 | 2010-03-11 | 0d |
| 4 | 1.1.1.1 | **1.1.1 Project Charter** | 1d? | 2010-03-11 | 2010-03-11 | 0d |
| 5 | 1.1.1.1.1 | 1.1.1.A01Reunion con el sponsor | 1d? | 2010-03-11 | 2010-03-11 | 0d |
| 6 | 1.1.1.1.2 | 1.1.1 A02Elaborar Project Charter | 1d? | 2010-03-11 | 2010-03-11 | 0d |
| 7 | 1.1.1.1.3 | 1.1.1.A03Revisar Project Charter | 1d? | 2010-03-11 | 2010-03-11 | 0d |
| 8 | 1.1.1.2 | **1.1.2 Scope Statement** | 1d? | 2010-03-11 | 2010-03-11 | 0d |
| 9 | 1.1.1.2.1 | 1.1.2.A01Reunion con el sponsor | 1d? | 2010-03-11 | 2010-03-11 | 0d |
| 10 | 1.1.1.2.2 | 1.1.2.A02Elaborar el Scope Statement | 1d? | 2010-03-11 | 2010-03-11 | 0d |
| 11 | 1.1.1.2.3 | 1.1.2.A03Revisar el Scope Statement | 1d? | 2010-03-11 | 2010-03-11 | 0d |
| 12 | 1.1.2 | **1.2 Plan del Proyecto** | 1d? | 2010-03-11 | 2010-03-11 | 0d |
| 13 | 1.1.2.1 | 1.2.A01Elaborar el plan del Proyecto | 1d? | 2010-03-11 | 2010-03-11 | 0d |
| 14 | 1.1.3 | **1.3 Informes del Estado del Proyecto** | 1d? | 2010-03-11 | 2010-03-11 | 0d |
| 15 | 1.1.3.1 | 1.3.A01Elaborar informe del estado del proyecto | 1d? | 2010-03-11 | 2010-03-11 | 0d |
| 16 | 1.1.4 | **1.4 Reunion de Coordinacion Semanal** | 1d? | 2010-03-11 | 2010-03-11 | 0d |
| 17 | 1.1.4.1 | 1.4.A01Realizar reunion de coordinacion | 1d? | 2010-03-11 | 2010-03-11 | 0d |
| 18 | 1.1.5 | **1.5 Cierre del Proyecto** | 1d? | 2010-03-11 | 2010-03-11 | 0d |
| 19 | 1.1.5.1 | 1.5.A01Elaborar documentos de cierre del proyecto | 1d? | 2010-03-11 | 2010-03-11 | 0d |
| 20 | 1.2 | **2.0 Analisis** | 1d? | 2010-03-11 | 2010-03-11 | 0d |
| 21 | 1.2.1 | **2.1 Listado de necesidades** | 1d? | 2010-03-11 | 2010-03-11 | 0d |
| 22 | 1.2.1.1 | 2.1.A01Determinar las necesidades del servicio | 1d? | 2010-03-11 | 2010-03-11 | 0d |
| 23 | 1.2.1.2 | 2.1.A02Determinar las especificaciones y requerimientos | 1d? | 2010-03-11 | 2010-03-11 | 0d |
| 24 | 1.3 | **3.0 Licitacion y Adquisicion** | 1d? | 2010-03-11 | 2010-03-11 | 0d |
| 25 | 1.3.1 | **3.1 Licitacion** | 1d? | 2010-03-11 | 2010-03-11 | 0d |
| 26 | 1.3.1.1 | **3.1.1 RFI de IT** | 1d? | 2010-03-11 | 2010-03-11 | 0d |
| 27 | 1.3.1.1.1 | 3.1.1.A01Determinar la capacidad interna y de los costos | 1d? | 2010-03-11 | 2010-03-11 | 0d |
| 28 | 1.3.1.1.2 | 3.1.1.A02Identificar a los vendedores calificados | 1d? | 2010-03-11 | 2010-03-11 | 0d |
| 29 | 1.3.1.1.3 | 3.1.1.A03Preparar el RFI | 1d? | 2010-03-11 | 2010-03-11 | 0d |

| ID | WBS | Task | Duration | Start | Finish | Total slack |
| --- | --- | --- | --- | --- | --- | --- |
| 30 | 1.3.1.2 | **3.1.2 RFP de IT** | 1d? | 2010-03-11 | 2010-03-11 | 0d |
| 31 | 1.3.1.2.1 | 3.1.2.A01Desarrollar el criterio de solucion | 1d? | 2010-03-11 | 2010-03-11 | 0d |
| 32 | 1.3.1.2.2 | 3.1.2.A02Desarrollar las bases tecnicas | 1d? | 2010-03-11 | 2010-03-11 | 0d |
| 33 | 1.3.1.3 | **3.1.3 LOI** | 1d? | 2010-03-11 | 2010-03-11 | 0d |
| 34 | 1.3.1.3.1 | 3.1.3.A01Emitir el RFQ | 1d? | 2010-03-11 | 2010-03-11 | 0d |
| 35 | 1.3.1.3.2 | 3.1.3.A02Emitir el RFP | 1d? | 2010-03-11 | 2010-03-11 | 0d |
| 36 | 1.3.1.3.3 | 3.1.3.A03Recibir ofertas | 1d? | 2010-03-11 | 2010-03-11 | 0d |
| 37 | 1.3.1.3.4 | 3.1.3.A04Evaluar Respuestas | 1d? | 2010-03-11 | 2010-03-11 | 0d |
| 38 | 1.3.1.3.5 | 3.1.3.A05Calificar proveedores | 1d? | 2010-03-11 | 2010-03-11 | 0d |
| 39 | 1.3.1.3.6 | 3.1.3.A06Adjudicar/Seleccionar Proveedores | 1d? | 2010-03-11 | 2010-03-11 | 0d |
| 40 | 1.3.1.3.7 | 3.1.3.A07Emitir Carta de Intención (LOI) | 1d? | 2010-03-11 | 2010-03-11 | 0d |
| 41 | 1.3.2 | **3.2 Adquisicion** | 1d? | 2010-03-11 | 2010-03-11 | 0d |
| 42 | 1.3.2.1 | **3.2.1 Contrato Solucion Movil** | 1d? | 2010-03-11 | 2010-03-11 | 0d |
| 43 | 1.3.2.1.1 | 3.2.1.A01Desarrollar el contrato marco | 1d? | 2010-03-11 | 2010-03-11 | 0d |
| 44 | 1.3.2.1.2 | 3.2.1.A02Determinar cronograma | 1d? | 2010-03-11 | 2010-03-11 | 0d |
| 45 | 1.3.2.1.3 | 3.2.1.A03Determinar el presupuesto | 1d? | 2010-03-11 | 2010-03-11 | 0d |
| 46 | 1.3.2.2 | **3.2.2 Contrato equipos y suministros** | 1d? | 2010-03-11 | 2010-03-11 | 0d |
| 47 | 1.3.2.2.1 | 3.2.2.A01Desarrollar el contrato marco | 1d? | 2010-03-11 | 2010-03-11 | 0d |
| 48 | 1.3.2.2.2 | 3.2.2.A02Determinar cronograma | 1d? | 2010-03-11 | 2010-03-11 | 0d |
| 49 | 1.3.2.2.3 | 3.2.2.A03Determinar el presupuesto | 1d? | 2010-03-11 | 2010-03-11 | 0d |
| 50 | 1.3.2.3 | **3.2.3 Orden de Compra solucion movil** | 1d? | 2010-03-11 | 2010-03-11 | 0d |
| 51 | 1.3.2.3.1 | 3.2.3.A01Solicitar la aprobacion del gasto | 1d? | 2010-03-11 | 2010-03-11 | 0d |
| 52 | 1.3.2.3.2 | 3.2.3.A02Solicitar la emision de la orden de compra | 1d? | 2010-03-11 | 2010-03-11 | 0d |
| 53 | 1.3.2.4 | **3.2.4 Orden de compra equipos y suministros** | 1d? | 2010-03-11 | 2010-03-11 | 0d |
| 54 | 1.3.2.4.1 | 3.2.4.A01Solicitar la aprobacion del gasto | 1d? | 2010-03-11 | 2010-03-11 | 0d |
| 55 | 1.3.2.4.2 | 3.2.4.A02Solicitar la emision de la orden de compra | 1d? | 2010-03-11 | 2010-03-11 | 0d |

| ID | WBS | Task | Duration | Start | Finish | Total slack |
| --- | --- | --- | --- | --- | --- | --- |
| 56 | 1.3.2.5 | **3.2.5 Aplicativo movil** | 1d? | 2010-03-11 | 2010-03-11 | 0d |
| 57 | 1.3.2.5.1 | 3.2.5.A01Aprobacion del aplicativo movil | 1d? | 2010-03-11 | 2010-03-11 | 0d |
| 58 | 1.3.2.6 | **3.2.6 Equipos y suministros** | 1d? | 2010-03-11 | 2010-03-11 | 0d |
| 59 | 1.3.2.6.1 | 3.2.6.A01Aprobacion de los equipos y suministros | 1d? | 2010-03-11 | 2010-03-11 | 0d |
| 60 | 1.4 | **4.0 Implementacion** | 1d? | 2010-03-11 | 2010-03-11 | 0d |
| 61 | 1.4.1 | **4.1 Etapa 1** | 1d? | 2010-03-11 | 2010-03-11 | 0d |
| 62 | 1.4.1.1 | **4.1.1 Solucion Movil preimplementado** | 1d? | 2010-03-11 | 2010-03-11 | 0d |
| 63 | 1.4.1.1.1 | 4.1.1.A01Identificacion de los involucrados | 1d? | 2010-03-11 | 2010-03-11 | 0d |
| 64 | 1.4.1.1.2 | 4.1.1.A02Efectuar entrevistas | 1d? | 2010-03-11 | 2010-03-11 | 0d |
| 65 | 1.4.1.1.3 | 4.1.1.A03Realizar pruebas en el sistema antes de la implementacion | 1d? | 2010-03-11 | 2010-03-11 | 0d |
| 66 | 1.4.1.2 | **4.1.2 Reporte preimplementacion** | 1d? | 2010-03-11 | 2010-03-11 | 0d |
| 67 | 1.4.1.2.1 | 4.1.2.A01Elaborar el reporte de la etapa 1 | 1d? | 2010-03-11 | 2010-03-11 | 0d |
| 68 | 1.4.1.2.2 | 4.1.2.A02Revisar el reporte de la etapa 1 | 1d? | 2010-03-11 | 2010-03-11 | 0d |
| 69 | 1.4.2 | **4.2 Etapa 2** | 1d? | 2010-03-11 | 2010-03-11 | 0d |
| 70 | 1.4.2.1 | **4.2.1 Solucion movil implementada** | 1d? | 2010-03-11 | 2010-03-11 | 0d |
| 71 | 1.4.2.1.1 | 4.2.1.A01Preparar el sistema para la implementacion del aplicativo movil | 1d? | 2010-03-11 | 2010-03-11 | 0d |
| 72 | 1.4.2.1.2 | 4.2.1.A02Implementacion de la aplicación movil en el sistema | 1d? | 2010-03-11 | 2010-03-11 | 0d |
| 73 | 1.4.2.2 | **4.2.1 Reporte implementacion** | 1d? | 2010-03-11 | 2010-03-11 | 0d |
| 74 | 1.4.2.2.1 | 4.2.2.A01Elaborar el reporte de la etapa 2 | 1d? | 2010-03-11 | 2010-03-11 | 0d |
| 75 | 1.4.2.2.2 | 4.2.2.A02Revisar el reporte de la etapa 2 | 1d? | 2010-03-11 | 2010-03-11 | 0d |
| 76 | 1.4.3 | **4.3 Etapa 3** | 1d? | 2010-03-11 | 2010-03-11 | 0d |
| 77 | 1.4.3.1 | **4.3.1 Equipos y suminitros operativos** | 1d? | 2010-03-11 | 2010-03-11 | 0d |
| 78 | 1.4.3.1.1 | 4.3.1.A01Identificacion de los vehiculos en los que se acondicionaran los equipos y suministros | 1d? | 2010-03-11 | 2010-03-11 | 0d |
| 79 | 1.4.3.1.2 | 4.3.1.A02Implementar en las unidades de transporte los equipos y suminitros | 1d? | 2010-03-11 | 2010-03-11 | 0d |
| 80 | 1.4.3.1.3 | 4.3.1.A03Validar la operatividad de los equipos y suministros | 1d? | 2010-03-11 | 2010-03-11 | 0d |

| ID | WBS | Task | Duration | Start | Finish | Total slack |
| --- | --- | --- | --- | --- | --- | --- |
| 81 | 1.4.3.2 | **4.3.2 Reporte de implementacion de equipos** | 1d? | 2010-03-11 | 2010-03-11 | 0d |
| 82 | 1.4.3.2.1 | 4.3.2.A01Elaborar el reporte de la etapa 3 | 1d? | 2010-03-11 | 2010-03-11 | 0d |
| 83 | 1.4.3.2.2 | 4.3.2.A02Revisar el reporte de la etapa 3 | 1d? | 2010-03-11 | 2010-03-11 | 0d |
| 84 | 1.4.4 | **4.4 Etapa 4** | 1d? | 2010-03-11 | 2010-03-11 | 0d |
| 85 | 1.4.4.1 | **4.4.1 Reporte solucion de problemas** | 1d? | 2010-03-11 | 2010-03-11 | 0d |
| 86 | 1.4.4.1.1 | 4.4.A01Elaborar el reporte solucion de problemas | 1d? | 2010-03-11 | 2010-03-11 | 0d |
| 87 | 1.4.4.1.2 | 4.4.A02Revisar el reporte de solucion de problemas | 1d? | 2010-03-11 | 2010-03-11 | 0d |
| 88 | 1.5 | **5.0 Capacitacion** | 1d? | 2010-03-11 | 2010-03-11 | 0d |
| 89 | 1.5.1 | **5.1 Dictado** | 1d? | 2010-03-11 | 2010-03-11 | 0d |
| 90 | 1.5.1.1 | 5.1.A01Realizar la sesion | 1d? | 2010-03-11 | 2010-03-11 | 0d |
| 91 | 1.5.2 | **5.2 Control de evaluacion** | 1d? | 2010-03-11 | 2010-03-11 | 0d |
| 92 | 1.5.2.1 | 5.2.A01Elaborar el informe de la sesion | 1d? | 2010-03-11 | 2010-03-11 | 0d |
| 93 | 1.5.2.2 | 5.2.A02Revisar informe | 1d? | 2010-03-11 | 2010-03-11 | 0d |
| 94 | 1.5.3 | **5.3 Informe** | 1d? | 2010-03-11 | 2010-03-11 | 0d |
| 95 | 1.5.3.1 | 5.3.A01Elaborar controles de evaluacion | 1d? | 2010-03-11 | 2010-03-11 | 0d |
| 96 | 1.5.3.2 | 5.3.A02Revisar controles de capacitacion | 1d? | 2010-03-11 | 2010-03-11 | 0d |
| 97 | 1.6 | **6.0 Informes** | 1d? | 2010-03-11 | 2010-03-11 | 0d |
| 98 | 1.6.1 | **6.1 Informe mensual** | 1d? | 2010-03-11 | 2010-03-11 | 0d |
| 99 | 1.6.1.1 | **6.1.1 Informe mes 1** | 1d? | 2010-03-11 | 2010-03-11 | 0d |
| 100 | 1.6.1.1.1 | 6.1.1.A01Elaborar informe mensual 1 | 1d? | 2010-03-11 | 2010-03-11 | 0d |
| 101 | 1.6.1.1.2 | 6.1.1.A02Revisar informe 1 | 1d? | 2010-03-11 | 2010-03-11 | 0d |
| 102 | 1.6.1.2 | **6.1.2 Informe mes 2** | 1d? | 2010-03-11 | 2010-03-11 | 0d |
| 103 | 1.6.1.2.1 | 6.1.2.A01Elaborar informe mensual 2 | 1d? | 2010-03-11 | 2010-03-11 | 0d |
| 104 | 1.6.1.2.2 | 6.1.2.A02Revisar informe 2 | 1d? | 2010-03-11 | 2010-03-11 | 0d |

| ID | WBS | Task | Duration | Start | Finish | Total slack |
| --- | --- | --- | --- | --- | --- | --- |
| 105 | 1.6.1.3 | **6.1.3 Informe mes 3** | 1d? | 2010-03-11 | 2010-03-11 | 0d |
| 106 | 1.6.1.3.1 | 6.1.3.A01Elaborar informe mensual 3 | 1d? | 2010-03-11 | 2010-03-11 | 0d |
| 107 | 1.6.1.3.2 | 6.1.3.A02Revisar informe 3 | 1d? | 2010-03-11 | 2010-03-11 | 0d |
| 108 | 1.6.1.4 | **6.1.4 Informe mes 4** | 1d? | 2010-03-11 | 2010-03-11 | 0d |
| 109 | 1.6.1.4.1 | 6.1.4.A01Elaborar informe mensual 4 | 1d? | 2010-03-11 | 2010-03-11 | 0d |
| 110 | 1.6.1.4.2 | 6.1.4.A02Revisar informe 4 | 1d? | 2010-03-11 | 2010-03-11 | 0d |
| 111 | 1.6.1.5 | **6.1.5 Informe mes 5** | 1d? | 2010-03-11 | 2010-03-11 | 0d |
| 112 | 1.6.1.5.1 | 6.1.5.A01Elaborar informe mensual 5 | 1d? | 2010-03-11 | 2010-03-11 | 0d |
| 113 | 1.6.1.5.2 | 6.1.5.A02Revisar informe 5 | 1d? | 2010-03-11 | 2010-03-11 | 0d |
| 114 | 1.6.2 | **6.2 Informe final** | 1d? | 2010-03-11 | 2010-03-11 | 0d |
| 115 | 1.6.2.1 | 6.2.A01Elaborar informe final | 1d? | 2010-03-11 | 2010-03-11 | 0d |
| 116 | 1.6.2.2 | 6.2.A02Revisar informe final | 1d? | 2010-03-11 | 2010-03-11 | 0d |
